# Simple Project Plan

Schedule from MS Project XML, 2016-02-29 to 2016-10-20, A marks actual dates.

## Calendars

- Estándar: Mon-Fri 09:00-13:00, 15:00-19:00; Sat-Sun off. Exceptions (off unless hours are given): 2016-03-24 to 2016-03-25 (Vacaciones Semana Santa), 2016-05-02 (Día del trabajador y Día Comunidad de Madrid), 2016-05-12 (Fiesta de la Hispanidad), 2016-05-16 (Festifividad de San Isidro), 2016-07-25 (Festividad Santiago Apóstol), 2016-08-15 (Festividad Asunción de la Virgen).

## Resources

| Resource | Group | Unit |
| --- | --- | --- |
| Responsable económico | Departamento de gestión |  |
| Responsable de contrataciones | Departamento de gestión |  |
| Jefe de proyecto | Departamento de diseño |  |
| Responsable de diseño | Departamento de diseño |  |
| Diseñador de sistemas | Departamento de diseño |  |
| Coordinador de desarrollo | Departamento de desarrollo |  |
| Responsable de software | Departamento de desarrollo |  |
| Desarrollador software | Departamento de desarrollo |  |
| Responsable hardware | Departamento de desarrollo |  |
| Responsable de validación | Departamento de validación |  |
| Empresa de instrucción en el manejo de drones | Subcontratación |  |
| Empresa instalación | Subcontratación |  |
| Empresa de transporte | Subcontratación |  |
| Asesoría legal | Subcontratación |  |
| Equipos informáticos |  | Informática |
| Personal de la finca |  |  |
| Software de programación |  |  |
| Servidores |  |  |
| Herramienta de validación |  |  |
| Sensores |  |  |
| Equipos conectividad |  |  |
| Nave industrial |  |  |
| Servicios cloud |  |  |
| Equipos de red |  |  |
| Drones |  |  |

## Schedule

| ID | WBS | Task | Type | Duration | Start | Finish | Predecessors | Complete | Constraint | Resources | Work | Actual work | personas.mes | Duración probable | Duración óptima | Duración con retraso |
| --- | --- | --- | --- | --- | --- | --- | --- | --- | --- | --- | --- | --- | --- | --- | --- | --- |
| 1 | 1 | **ESTUDIO DE LA VIABILIDAD TECNOLÓGICA** |  | 6d | 2016-02-29 A | 2016-03-07 A |  | 100% |  |  | 96h | 96h | 0.6 | 6d | 5d | 7d |
| 2 | 1.1 | Revisión de proyectos similares |  | 6d | 2016-02-29 A | 2016-03-07 A |  | 100% |  | Responsable de diseño; Equipos informáticos [1 Informática] | 48h | 48h | 0.3 | 6d | 5d | 7d |
| 3 | 1.2 | Estudio del estado del arte de la tecnología |  | 6d | 2016-02-29 A | 2016-03-07 A | 2SS | 100% |  | Diseñador de sistemas; Equipos informáticos [1 Informática] | 48h | 48h | 0.3 | 6d | 5d | 7d |
| 4 | 2 | **ESTUDIO PRELIMINAR DE LA SOLUCIÓN TECNOLÓGICA** |  | 8.5d | 2016-03-08 A | 2016-03-18 A | 1 | 100% |  |  | 118h | 118h | 0.78 | 8.5d | 7d | 10d |
| 5 | 2.1 | Análisis general y propuesta de solución |  | 58h | 2016-03-08 A | 2016-03-17 A | 3, 2 | 100% | start no earlier than 2016-03-07 | Jefe de proyecto; Equipos informáticos [1 Informática] | 58h | 58h | 0.36 | 58h | 48h | 68h |
| 6 | 2.2 | Estudio del perfil de usuario |  | 10h | 2016-03-08 A | 2016-03-09 A | 5SS | 100% | start no earlier than 2016-03-08 | Diseñador de sistemas; Personal de la finca | 10h | 10h | 0.12 | 10h | 8h | 12h |
| 7 | 2.3 | Definición de requisitos funcionales |  | 20h | 2016-03-09 A | 2016-03-11 A | 6 | 100% | start no earlier than 2016-03-09 | Responsable de diseño; Equipos informáticos [1 Informática] | 20h | 20h | 0.12 | 20h | 16h | 24h |
| 8 | 2.4 | Definición de requisitos no funcionales |  | 20h | 2016-03-09 A | 2016-03-11 A | 7SS | 100% | start no earlier than 2016-03-09 | Diseñador de sistemas; Equipos informáticos [1 Informática] | 20h | 20h | 0.12 | 20h | 16h | 24h |
| 9 | 2.5 | Primera estimación de costes |  | 10h | 2016-03-17 A | 2016-03-18 A | 5 | 100% | finish no earlier than 2016-03-17 | Responsable económico; Equipos informáticos [1 Informática] | 10h | 10h | 0.06 | 10h | 8h | 12h |
| 10 | 3 | **ESTUDIO DE LA VIABILIDAD LEGAL** |  | 11d | 2016-03-03 A | 2016-03-17 A |  | 100% |  |  | 25h | 25h | 0.15 | 11d | 10d | 12d |
| 11 | 3.1 | Búsqueda y contratación de asesoría legal |  | 20h | 2016-03-03 A | 2016-03-07 A |  | 100% | start no earlier than 2016-03-03 | Responsable de contrataciones; Equipos informáticos [1 Informática] | 20h | 20h | 0.12 | 20h | 16h | 24h |
| 12 | 3.2 | Estudio restricciones legales |  | 7d | 2016-03-07 A | 2016-03-16 A | 11 | 100% | finish no earlier than 2016-02-29 | Asesoría legal |  |  |  | 7d | 5d | 9d |
| 13 | 3.3 | Análisis del informe recibido |  | 5h | 2016-03-17 A | 2016-03-17 A | 12 | 100% | finish no earlier than 2016-03-17 | Jefe de proyecto | 5h | 5h | 0.03 | 5h | 4h | 6h |
| 14 | 4 | HITO 1. Propuesta formal de la solución | milestone | 0d | 2016-03-18 A | 2016-03-18 A | 4, 10 | 100% |  |  |  |  |  |  |  |  |
| 15 | 5 | [Documento] Propuesta formal de solución |  | 2h | 2016-03-18 A | 2016-03-18 A | 14 | 100% | finish no earlier than 2016-03-18 |  |  |  |  | 2h | 3h | 5h |
| 16 | 6 | **DISEÑO DEL SISTEMA** |  | 16d | 2016-03-21 A | 2016-04-13 A | 14 | 100% |  |  | 208h | 208h | 1.27 | 16d | 14d | 18d |
| 17 | 6.1 | Esquema de arquitectura del sistema |  | 30h | 2016-03-21 A | 2016-03-28 A |  | 100% | start no earlier than 2016-03-21 | Responsable de diseño; Equipos informáticos [1 Informática] | 30h | 30h | 0.18 | 30h | 24h | 36h |
| 18 | 6.2 | Descripción de topología del sistema y componentes |  | 18h | 2016-03-28 A | 2016-03-30 A | 17 | 100% |  | Responsable de diseño; Equipos informáticos [1 Informática] | 18h | 18h | 0.11 | 18h | 16h | 20h |
| 19 | 6.3 | Descripción de interfaces y tecnologías de comunicación |  | 18h | 2016-03-28 A | 2016-03-30 A | 18SS | 100% |  | Diseñador de sistemas; Equipos informáticos [1 Informática] | 18h | 18h | 0.11 | 18h | 16h | 20h |
| 20 | 6.4 | Especificaciones Software |  | 28h | 2016-03-31 A | 2016-04-05 A | 18, 19 | 100% |  | Diseñador de sistemas; Equipos informáticos [1 Informática] | 28h | 28h | 0.17 | 28h | 24h | 32h |
| 21 | 6.5 | Especificaciones Hardware |  | 18h | 2016-03-31 A | 2016-04-04 A | 20SS | 100% | finish no earlier than 2016-02-29 | Responsable de diseño; Equipos informáticos [1 Informática] | 18h | 18h | 0.11 | 18h | 16h | 20h |
| 22 | 6.6 | Especificaciones de red |  | 28h | 2016-04-05 A | 2016-04-08 A |  | 100% | start no earlier than 2016-04-05 | Responsable de diseño; Equipos informáticos [1 Informática] | 28h | 28h | 0.17 | 28h | 24h | 32h |
| 23 | 6.7 | Elaboración de plan de calidad |  | 20h | 2016-04-06 A | 2016-04-08 A | 21, 20 | 100% | finish no earlier than 2016-04-08 | Responsable de validación; Equipos informáticos [1 Informática] | 20h | 20h | 0.12 | 20h | 16h | 24h |
| 24 | 6.8 | Revisión y ajuste del diseño |  | 3d | 2016-04-11 A | 2016-04-13 A | 22, 20, 21, 23 | 100% | finish no earlier than 2016-04-13 | Jefe de proyecto; Responsable de diseño | 48h | 48h | 0.3 | 3d | 2d | 4d |
| 25 | 7 | [Documento] Diseño definitivo de la arquitectura del sistema |  | 2h | 2016-04-14 A | 2016-04-14 A | 16 | 100% | finish no earlier than 2016-02-29 |  |  |  |  | 2h | 1h | 3h |

| ID | WBS | Task | Type | Duration | Start | Finish | Predecessors | Complete | Total slack | Constraint | Resources | Work | Actual work | personas.mes | Duración probable | Duración óptima | Duración con retraso |
| --- | --- | --- | --- | --- | --- | --- | --- | --- | --- | --- | --- | --- | --- | --- | --- | --- | --- |
| 26 | 8 | **SELECCIÓN DE COMPONENTES HW Y SW** |  | 4.38d | 2016-04-14 A | 2016-04-20 A | 16 | 100% |  |  |  | 40h | 40h | 0.24 | 35h | 28h | 42h |
| 27 | 8.1 | Determinación de componentes a adquirir o desarrollar |  | 5h | 2016-04-14 A | 2016-04-14 A | 24 | 100% |  |  | Responsable de diseño; Coordinador de desarrollo | 10h | 10h | 0.06 | 5h | 4h | 6h |
| 28 | 8.2 | Selección y contacto con proveedores |  | 20h | 2016-04-14 A | 2016-04-19 A | 27 | 100% |  |  | Diseñador de sistemas | 20h | 20h | 0.12 | 20h | 16h | 24h |
| 29 | 8.3 | Elaboración de borrador de presupuesto |  | 10h | 2016-04-19 A | 2016-04-20 A | 28 | 100% |  |  | Responsable económico | 10h | 10h | 0.06 | 10h | 8h | 12h |
| 30 | 9 | HITO 2. Diseño de arquitectura y presupuesto | milestone | 0d | 2016-04-20 A | 2016-04-20 A | 26 | 100% |  |  |  |  |  |  |  |  |  |
| 31 | 10 | [Documento] Presentación formal de arquitectura y presupuesto |  | 2h | 2016-04-20 A | 2016-04-20 A | 30 | 100% |  |  |  |  |  |  | 2h | 1h | 3h |
| 32 | 11 | **DESARROLLO DEL SISTEMA SOFTWARE** |  | 77.62d | 2016-04-20 | 2016-08-11 | 30 |  | 0d |  |  | 1440h |  | 9 | 15w | 11w | 17w |
| 33 | 11.1 | Desarrollo unitario de módulos SW |  | 5w | 2016-04-20 | 2016-05-30 | 20 |  | 0d |  | Responsable de software; Desarrollador software; Equipos informáticos [2 Informática]; Software de programación [200%]; Servidores | 400h |  | 2.5 | 5w | 4w | 6w |
| 34 | 11.2 | Validación unitaria de módulos SW |  | 18d | 2016-05-30 | 2016-06-23 | 33 |  | 0d |  | Responsable de validación; Responsable de software; Equipos informáticos [2 Informática]; Servidores; Herramienta de validación | 288h |  | 1.8 | 18d | 10d | 15d |
| 35 | 11.3 | Integración de módulos SW |  | 3w | 2016-06-23 | 2016-07-14 | 34 |  | 0d |  | Responsable de software; Desarrollador software; Equipos informáticos [2 Informática]; Servidores | 240h |  | 1.5 | 3w | 2w | 4w |
| 36 | 11.4 | Validación del sistema integrado |  | 17d | 2016-07-14 | 2016-08-09 | 35 |  | 0d |  | Responsable de validación; Responsable de software; Equipos informáticos [2 Informática]; Servidores; Herramienta de validación | 272h |  | 1.7 | 17d | 14d | 20d |
| 37 | 11.5 | Elaboración de manual de usuario |  | 30d | 2016-05-31 | 2016-08-11 | 33 |  | 9.38d | start no earlier than 2016-05-31 | Desarrollador software; Equipos informáticos [1 Informática] | 240h |  | 1.5 |  |  |  |
| 38 | 12 | **PREPARACIÓN PARA EL DESPLIEGUE** |  | 87d | 2016-04-20 | 2016-08-26 | 32SS |  | 0d |  |  | 317h |  | 1.97 | 17w | 14w | 20w |
| 39 | 12.1 | Compra de componentes |  | 2d | 2016-04-20 | 2016-04-22 | 28 |  | 73d | start no earlier than 2016-04-20 | Responsable de contrataciones | 16h |  | 0.1 | 2d | 1d | 3d |
| 40 | 12.2 | Contratación de servicios Cloud |  | 3h | 2016-04-22 | 2016-04-22 |  |  | 73d | start no earlier than 2016-04-22 | Responsable de contrataciones | 3h |  | 0.01 | 3h | 2h | 4h |
| 41 | 12.3 | Contratación de empresas de instalación y de transporte |  | 10h | 2016-04-25 | 2016-04-26 |  |  | 83.12d | start no earlier than 2016-04-25 | Responsable de contrataciones | 10h |  | 0.06 | 10h | 8h | 12h |
| 42 | 12.4 | Simulación y validación del sistema completo |  | 12d | 2016-08-09 | 2016-08-26 | 36, 40, 39 |  | 0d |  | Responsable de software; Responsable hardware; Responsable de validación; Equipos informáticos [3 Informática]; Herramienta de validación; Sensores [300%]; Servicios cloud; Nave industrial; Equipos de red; Drones | 288h |  | 1.8 | 12d | 10d | 15d |
| 43 | 13 | HITO 3. Validación final del sistema | milestone | 0d | 2016-08-26 | 2016-08-26 | 32, 38 |  | 0d |  |  |  |  |  |  |  |  |
| 44 | 14 | [Documento] Informe sobre el resultado de las pruebas y manual de usuario |  | 2h | 2016-08-26 | 2016-08-26 | 43 |  | 38.75d |  |  |  |  |  | 2h | 1h | 3h |
| 45 | 15 | **DESPLIEGUE DEL SISTEMA EN LA FINCA** |  | 27d | 2016-08-26 | 2016-10-04 | 43 |  | 0d |  |  | 312h |  | 2.4 | 27d | 19d | 33d |
| 46 | 15.1 | Transporte del equipamiento a la finca |  | 2d | 2016-08-26 | 2016-08-30 | 41 |  | 0d | start no earlier than 2016-08-26 | Empresa de transporte |  |  | 0.1 | 2d | 1d | 3d |
| 47 | 15.2 | Instalación de sensores |  | 7d | 2016-08-30 | 2016-09-08 | 46, 39 |  | 0d |  | Empresa instalación; Jefe de proyecto; Sensores [12500%] | 56h |  | 0.7 | 7d | 5d | 8d |
| 48 | 15.3 | Montaje de red |  | 6d | 2016-09-08 | 2016-09-16 | 47 |  | 0d |  | Responsable de diseño | 48h |  | 0.3 | 6d | 5d | 7d |
| 49 | 15.4 | Configuración de los equipos |  | 4d | 2016-09-16 | 2016-09-22 | 48 |  | 0d |  | Responsable hardware; Responsable de software | 64h |  | 0.4 | 4d | 3d | 5d |
| 50 | 15.5 | Instalación y puesta en marcha del sistema de información |  | 2d | 2016-09-16 | 2016-09-20 | 49SS |  | 2d |  | Desarrollador software; Empresa de instrucción en el manejo de drones; Servicios cloud | 16h |  | 0.1 | 2d | 1d | 3d |
| 51 | 15.6 | Validación global del sistema |  | 8d | 2016-09-22 | 2016-10-04 | 50, 49 |  | 0d |  | Responsable de validación; Jefe de proyecto; Drones [200%]; Servicios cloud; Equipos de red; Sensores [12500%] | 128h |  | 0.8 | 8d | 5d | 10d |

| ID | WBS | Task | Type | Duration | Start | Finish | Predecessors | Total slack | Constraint | Resources | Work | personas.mes | Duración probable | Duración óptima | Duración con retraso |
| --- | --- | --- | --- | --- | --- | --- | --- | --- | --- | --- | --- | --- | --- | --- | --- |
| 52 | 16 | **FORMACIÓN DEL USUARIO** |  | 26.38d | 2016-08-29 | 2016-10-04 | 45SS | 0d |  |  | 40h | 0.24 |  |  |  |
| 53 | 16.1 | Cursos de pilotaje y manejo de drones |  | 75h | 2016-08-29 | 2016-09-09 |  | 17d | start no earlier than 2016-08-29 | Empresa de instrucción en el manejo de drones |  |  | 75h | 70h | 80h |
| 54 | 16.2 | Formación relativa a la operación de red |  | 20h | 2016-09-29 | 2016-10-04 | 51FF | 0d |  | Responsable hardware | 20h | 0.12 | 20h | 16h | 24h |
| 55 | 16.3 | Formación relativa a operación del sistema de información |  | 20h | 2016-09-29 | 2016-10-04 | 51FF | 0d |  | Desarrollador software | 20h | 0.12 | 20h | 16h | 24h |
| 56 | 17 | HITO 4. Instalación completada | milestone | 0d | 2016-10-04 | 2016-10-04 | 52, 45 | 0d |  |  |  |  |  |  |  |
| 57 | 18 | **RESOLUCIÓN DE INCIDENCIAS** |  | 12d | 2016-10-04 | 2016-10-20 | 56 | 0d |  |  | 96h | 1.8 | 12d | 10d | 14d |
| 58 | 18.1 | Atención a incidencias y resolución de problemas |  | 12d | 2016-10-04 | 2016-10-20 | 51 | 0d | finish no earlier than 2016-10-19 | Jefe de proyecto | 96h | 1.8 | 12d | 10d | 14d |
| 59 | 19 | HITO 5. FIN DE PROYECTO | milestone | 0d | 2016-10-20 | 2016-10-20 | 57 | 0d |  |  |  |  |  |  |  |
